# Cronograma

How a schedule from MS Project changed from version to version. A marks actual dates.

## Version 1 (saved 2018-11-07)

Note of the change: Cronograma

| ID | WBS | Task | Duration | Start | Finish | Predecessors | Total float | Constraint |
| --- | --- | --- | --- | --- | --- | --- | --- | --- |
| 1 |  | Sistema Gerenciador de Jogos | 30d | 2018-10-29 09:00 | 2018-12-03 18:00 |  |  |  |
| 2 | 2 | **Prospecção** | 24h | 2018-10-29 09:00 | 2018-10-31 18:00 |  |  |  |
| 3 | 2.1 | **PTEC** | 8h | 2018-10-29 09:00 | 2018-10-29 18:00 |  |  |  |
| 4 |  | Estudar domínio da Aplicação | 1d | 2018-10-29 09:00 | 2018-10-29 18:00 |  |  |  |
| 5 |  | Redigir PTEC | 1d | 2018-10-29 09:00 | 2018-10-29 18:00 | 4 |  |  |
| 6 |  | Revisar PTEC | 1d | 2018-10-29 09:00 | 2018-10-29 18:00 | 5 |  |  |
| 7 |  | Aprovar PTEC | 1d | 2018-10-29 09:00 | 2018-10-29 18:00 | 6 |  |  |
| 8 | 2.2 | **Estimativa Prel. De Tamanho** | 2d | 2018-10-30 09:00 | 2018-10-31 18:00 |  |  |  |
| 9 |  | Estimar tamanho do Projeto | 0.12d | 2018-10-30 09:00 | 2018-10-30 10:00 | 7 |  |  |
| 10 |  | Revisar Estimativa de Tamanho | 0.12d | 2018-10-30 10:00 | 2018-10-30 11:00 | 9 |  |  |
| 11 | 3 | **Análise** | 3d | 2018-10-31 09:00 | 2018-11-02 18:00 |  |  |  |
| 12 | 3.1 | **Documento de Requisitos** | 2d | 2018-10-31 09:00 | 2018-11-01 18:00 |  |  |  |
| 13 |  | Reunir-se com a equipe de desenvolvimento | 0.12d | 2018-10-30 11:00 | 2018-10-30 12:00 | 10 |  |  |
| 14 |  | Elaborar DRE | 0.5d | 2018-10-31 09:00 | 2018-10-31 14:00 | 13 |  |  |
| 15 |  | Revisar DRE | 0.12d | 2018-10-31 14:00 | 2018-10-31 15:00 | 14 |  |  |
| 16 | 3.2 | **Matriz de Rastreabilidade Bidirecional** | 2d | 2018-11-01 09:00 | 2018-11-02 18:00 |  |  |  |
| 17 |  | Elaborar MRB | 0.62d | 2018-10-31 15:00 | 2018-11-01 11:00 | 15 |  |  |
| 18 |  | Revisar Requisitos para confirmar entrada na MRB | 2h | 2018-11-01 11:00 | 2018-11-01 14:00 | 17 |  |  |
| 19 |  | Revisar MRB | 0.25d | 2018-11-01 14:00 | 2018-11-01 16:00 | 18 |  |  |
| 20 | 4 | **Projeto** | 2d | 2018-11-03 09:00 | 2018-11-05 18:00 |  |  |  |
| 21 |  | Elaborar DC | 1d | 2018-11-01 16:00 | 2018-11-02 16:00 | 19 |  |  |
| 22 |  | Revisar DC | 1d | 2018-11-02 16:00 | 2018-11-03 16:00 | 21 |  |  |
| 23 |  | Atualizar MRB | 0.12d | 2018-11-03 16:00 | 2018-11-03 17:00 | 22 |  |  |
| 24 | 4.4 | **Modelo Entidade Relacionamento** | 2d | 2018-11-04 09:00 | 2018-11-05 18:00 |  |  |  |
| 25 |  | Elaborar MER | 0.25d | 2018-11-04 09:00 | 2018-11-04 11:00 | 23 |  |  |
| 26 |  | Revisar MER | 0.12d | 2018-11-05 09:00 | 2018-11-05 10:00 | 25 |  |  |
| 27 | 5 | **Implementação ou Prototipagem** | 19d | 2018-11-08 09:00 | 2018-11-30 18:00 |  |  |  |
| 28 |  | Release 02 | 3d | 2018-11-08 09:00 | 2018-11-11 18:00 | 26 | 4d | start no earlier than 2018-11-08 09:00 |
| 29 |  | Release 03 | 5d | 2018-11-13 09:00 | 2018-11-18 18:00 | 28 | 3d | start no earlier than 2018-11-13 09:00 |
| 30 |  | Release 04 | 4d | 2018-11-20 09:00 | 2018-11-25 18:00 | 29 | 2d | finish no earlier than 2018-11-25 18:00 |
| 31 |  | Release 05 | 4d | 2018-11-27 09:00 | 2018-11-30 18:00 | 30 | 1d | finish no earlier than 2018-11-30 18:00 |
| 32 | 6 | **Fase de Fechamento** | 2d | 2018-12-01 09:00 | 2018-12-03 18:00 |  |  |  |
| 33 |  | Execução de Testes no Ambiente de Teste | 2d | 2018-12-01 09:00 | 2018-12-02 18:00 | 31 |  |  |

## Version 2 (saved 2018-11-12)

Note of the change: Cronograma antigo

Last finish stays 2018-12-03.

Added:

| ID | Task | Duration | Start | Finish | Predecessors | Resources |
| --- | --- | --- | --- | --- | --- | --- |
| 29 | Prototipar CRUDs 1 e 2 | 1d | 2018-11-08 09:00 | 2018-11-08 18:00 |  | André; Érick |
| 30 | Verificar cronograma | 1d | 2018-11-09 09:00 | 2018-11-09 18:00 | 29 | Felippe |
| 31 | Commitar alterações na main branch | 1d | 2018-11-11 09:00 | 2018-11-11 18:00 | 30 | Érick |
| 33 | Prototipar CRUDs 3 e 4 | 1d | 2018-11-14 09:00 | 2018-11-14 18:00 |  | André; Érick |
| 34 | Verificar cronograma | 1d | 2018-11-15 09:00 | 2018-11-15 18:00 | 33 | Felippe |
| 35 | Commitar alterações na main branch | 1d | 2018-11-16 09:00 | 2018-11-16 18:00 | 34 | Érick |
| 37 | Prototipar CRUDs 5 e 6 | 1d | 2018-11-21 09:00 | 2018-11-21 18:00 |  | André; José |
| 38 | Verificar cronograma | 1d | 2018-11-22 09:00 | 2018-11-22 18:00 | 37 | Felippe |
| 39 | Commitar alterações na main branch | 1d | 2018-11-23 09:00 | 2018-11-23 18:00 | 38 | Érick |
| 41 | Prototipar CRUDs 7 e 8 | 1d | 2018-11-28 09:00 | 2018-11-28 18:00 |  | Érick; Felippe |
| 42 | Verificar cronograma | 1d | 2018-11-29 09:00 | 2018-11-29 18:00 | 41 | Felippe |
| 43 | Commitar alterações na main branch | 1d | 2018-11-30 09:00 | 2018-11-30 18:00 | 42 | Érick |

Changed:

| ID | Task | Start | Finish | Duration | Total float | Other |
| --- | --- | --- | --- | --- | --- | --- |
| 27 | **Implementação ou Prototipagem** |  | 2018-11-30 18:00 → 2018-12-01 18:00 (+1d) | 19d → 20d |  |  |
| 28 | **Release 01** |  | 2018-11-11 18:00 → 2018-11-14 18:00 (+3d) | 3d → 6d | 4d → none | was named Release 02; constraint start no earlier than 2018-11-08 09:00 → none |
| 32 | **Release 02** | 2018-11-13 09:00 → 2018-11-14 09:00 (+1d) | 2018-11-18 18:00 → 2018-11-21 18:00 (+3d) | 5d → 7d | 3d → none | was named Release 03; constraint start no earlier than 2018-11-13 09:00 → none |
| 36 | **Release 03** | 2018-11-20 09:00 → 2018-11-21 09:00 (+1d) | 2018-11-25 18:00 → 2018-11-28 18:00 (+3d) | 4d → 6d | 2d → none | was named Release 04; constraint finish no earlier than 2018-11-25 18:00 → none |
| 40 | **Release 04** | 2018-11-27 09:00 → 2018-11-28 09:00 (+1d) | 2018-11-30 18:00 → 2018-12-01 18:00 (+1d) |  | 1d → none | was named Release 05; constraint finish no earlier than 2018-11-30 18:00 → none |
| 45 | Execução de Testes no Ambiente de Teste |  | 2018-12-02 18:00 → 2018-12-03 18:00 (+1d) |  |  | resources Programador 1; Programador 2 → André; Érick; Felippe; José |

## Version 3 (saved 2018-11-28)

Note of the change: Atualização do cronograma

Last finish stays 2018-12-03. Complete tasks 0 → 26.

Changed:

| ID | Task | Start | Finish | Complete | Other |
| --- | --- | --- | --- | --- | --- |
| 1 | **Sistema Gerenciador de Jogos** | 2018-10-29 09:00 A |  | 0% → 81% | baseline start none → 2018-10-29 09:00; baseline finish none → 2018-12-03 18:00 |
| 2 | **Prospecção** | 2018-10-29 09:00 A |  | 0% → 100% | baseline start none → 2018-10-29 09:00; baseline finish none → 2018-10-31 18:00 |
| 3 | **PTEC** | 2018-10-29 09:00 A | 2018-10-29 18:00 A | 0% → 100% | baseline start none → 2018-10-29 09:00; baseline finish none → 2018-10-29 18:00 |
| 4 | Estudar domínio da Aplicação | 2018-10-29 09:00 A | 2018-10-29 18:00 A | 0% → 100% | baseline start none → 2018-10-29 09:00; baseline finish none → 2018-10-29 18:00 |
| 5 | Redigir PTEC | 2018-10-29 09:00 A | 2018-10-29 18:00 A | 0% → 100% | baseline start none → 2018-10-29 09:00; baseline finish none → 2018-10-29 18:00 |
| 6 | Revisar PTEC | 2018-10-29 09:00 A | 2018-10-29 18:00 A | 0% → 100% | baseline start none → 2018-10-29 09:00; baseline finish none → 2018-10-29 18:00 |
| 7 | Aprovar PTEC | 2018-10-29 09:00 A | 2018-10-29 18:00 A | 0% → 100% | baseline start none → 2018-10-29 09:00; baseline finish none → 2018-10-29 18:00 |
| 8 | **Estimativa Prel. De Tamanho** | 2018-10-30 09:00 A |  | 0% → 100% | baseline start none → 2018-10-30 09:00; baseline finish none → 2018-10-31 18:00 |
| 9 | Estimar tamanho do Projeto | 2018-10-30 09:00 A | 2018-10-30 10:00 A | 0% → 100% | baseline start none → 2018-10-30 09:00; baseline finish none → 2018-10-30 10:00 |
| 10 | Revisar Estimativa de Tamanho | 2018-10-30 10:00 A | 2018-10-30 11:00 A | 0% → 100% | baseline start none → 2018-10-30 10:00; baseline finish none → 2018-10-30 11:00 |
| 11 | **Análise** |  |  | 0% → 100% | baseline start none → 2018-10-31 09:00; baseline finish none → 2018-11-02 18:00 |
| 12 | **Documento de Requisitos** |  |  | 0% → 100% | baseline start none → 2018-10-31 09:00; baseline finish none → 2018-11-01 18:00 |
| 13 | Reunir-se com a equipe de desenvolvimento | 2018-10-30 11:00 A | 2018-10-30 12:00 A | 0% → 100% | baseline start none → 2018-10-30 11:00; baseline finish none → 2018-10-30 12:00 |
| 14 | Elaborar DRE | 2018-10-31 09:00 A | 2018-10-31 14:00 A | 0% → 100% | baseline start none → 2018-10-31 09:00; baseline finish none → 2018-10-31 14:00 |
| 15 | Revisar DRE | 2018-10-31 14:00 A | 2018-10-31 15:00 A | 0% → 100% | baseline start none → 2018-10-31 14:00; baseline finish none → 2018-10-31 15:00 |
| 16 | **Matriz de Rastreabilidade Bidirecional** |  |  | 0% → 100% | baseline start none → 2018-11-01 09:00; baseline finish none → 2018-11-02 18:00 |
| 17 | Elaborar MRB | 2018-10-31 15:00 A | 2018-11-01 11:00 A | 0% → 100% | baseline start none → 2018-10-31 15:00; baseline finish none → 2018-11-01 11:00 |
| 18 | Revisar Requisitos para confirmar entrada na MRB | 2018-11-01 11:00 A | 2018-11-01 14:00 A | 0% → 100% | baseline start none → 2018-11-01 11:00; baseline finish none → 2018-11-01 14:00 |
| 19 | Revisar MRB | 2018-11-01 14:00 A | 2018-11-01 16:00 A | 0% → 100% | baseline start none → 2018-11-01 14:00; baseline finish none → 2018-11-01 16:00 |
| 20 | **Projeto** |  |  | 0% → 100% | baseline start none → 2018-11-03 09:00; baseline finish none → 2018-11-05 18:00 |
| 21 | Elaborar DC | 2018-11-01 16:00 A | 2018-11-02 16:00 A | 0% → 100% | baseline start none → 2018-11-01 16:00; baseline finish none → 2018-11-02 16:00 |
| 22 | Revisar DC | 2018-11-02 16:00 A | 2018-11-03 16:00 A | 0% → 100% | baseline start none → 2018-11-02 16:00; baseline finish none → 2018-11-03 16:00 |
| 23 | Atualizar MRB | 2018-11-03 16:00 A | 2018-11-03 17:00 A | 0% → 100% | baseline start none → 2018-11-03 16:00; baseline finish none → 2018-11-03 17:00 |
| 24 | **Modelo Entidade Relacionamento** | 2018-11-04 09:00 A |  | 0% → 100% | baseline start none → 2018-11-04 09:00; baseline finish none → 2018-11-05 18:00 |
| 25 | Elaborar MER | 2018-11-04 09:00 A | 2018-11-04 11:00 A | 0% → 100% | baseline start none → 2018-11-04 09:00; baseline finish none → 2018-11-04 11:00 |
| 26 | Revisar MER | 2018-11-05 09:00 A | 2018-11-05 10:00 A | 0% → 100% | baseline start none → 2018-11-05 09:00; baseline finish none → 2018-11-05 10:00 |
| 27 | **Implementação ou Prototipagem** | 2018-11-08 09:00 A |  | 0% → 81% | baseline start none → 2018-11-08 09:00; baseline finish none → 2018-12-01 18:00 |
| 28 | **Release 01** | 2018-11-08 09:00 A |  | 0% → 100% | baseline start none → 2018-11-08 09:00; baseline finish none → 2018-11-14 18:00 |
| 29 | Prototipar CRUDs 1 e 2 | 2018-11-08 09:00 A | 2018-11-08 18:00 A | 0% → 100% | baseline start none → 2018-11-08 09:00; baseline finish none → 2018-11-08 18:00 |
| 30 | Verificar cronograma | 2018-11-09 09:00 A | 2018-11-09 18:00 A | 0% → 100% | baseline start none → 2018-11-09 09:00; baseline finish none → 2018-11-09 18:00 |
| 31 | Commitar alterações na main branch | 2018-11-11 09:00 A | 2018-11-11 18:00 A | 0% → 100% | baseline start none → 2018-11-11 09:00; baseline finish none → 2018-11-11 18:00 |
| 32 | **Release 02** | 2018-11-14 09:00 A |  | 0% → 100% | baseline start none → 2018-11-14 09:00; baseline finish none → 2018-11-21 18:00 |
| 33 | Prototipar CRUDs 3 e 4 | 2018-11-14 09:00 A | 2018-11-14 18:00 A | 0% → 100% | baseline start none → 2018-11-14 09:00; baseline finish none → 2018-11-14 18:00 |
| 34 | Verificar cronograma | 2018-11-15 09:00 A | 2018-11-15 18:00 A | 0% → 100% | baseline start none → 2018-11-15 09:00; baseline finish none → 2018-11-15 18:00 |
| 35 | Commitar alterações na main branch | 2018-11-16 09:00 A | 2018-11-16 18:00 A | 0% → 100% | baseline start none → 2018-11-16 09:00; baseline finish none → 2018-11-16 18:00 |
| 36 | **Release 03** | 2018-11-21 09:00 A |  | 0% → 100% | baseline start none → 2018-11-21 09:00; baseline finish none → 2018-11-28 18:00 |
| 37 | Prototipar CRUDs 5 e 6 | 2018-11-21 09:00 A | 2018-11-21 18:00 A | 0% → 100% | baseline start none → 2018-11-21 09:00; baseline finish none → 2018-11-21 18:00 |
| 38 | Verificar cronograma | 2018-11-22 09:00 A | 2018-11-22 18:00 A | 0% → 100% | baseline start none → 2018-11-22 09:00; baseline finish none → 2018-11-22 18:00 |
| 39 | Commitar alterações na main branch | 2018-11-23 09:00 A | 2018-11-23 18:00 A | 0% → 100% | baseline start none → 2018-11-23 09:00; baseline finish none → 2018-11-23 18:00 |
| 40 | **Release 04** | 2018-11-28 09:00 A |  | 0% → 24% | baseline start none → 2018-11-28 09:00; baseline finish none → 2018-12-01 18:00 |
| 41 | Prototipar CRUDs 7 e 8 | 2018-11-28 09:00 A |  | 0% → 72% | baseline start none → 2018-11-28 09:00; baseline finish none → 2018-11-28 18:00 |
| 42 | Verificar cronograma |  |  |  | baseline start none → 2018-11-29 09:00; baseline finish none → 2018-11-29 18:00 |
| 43 | Commitar alterações na main branch |  |  |  | baseline start none → 2018-11-30 09:00; baseline finish none → 2018-11-30 18:00 |
| 44 | **Fase de Fechamento** |  |  |  | baseline start none → 2018-12-01 09:00; baseline finish none → 2018-12-03 18:00 |
| 45 | Execução de Testes no Ambiente de Teste |  |  |  | baseline start none → 2018-12-01 09:00; baseline finish none → 2018-12-03 18:00 |

## Version 4 (saved 2018-12-03)

Note of the change: Merge pull request #15 from FelippeS/master

Last finish stays 2018-12-03.

Changed:

| ID | Task | Finish | Duration |
| --- | --- | --- | --- |
| 27 | **Implementação ou Prototipagem** | 2018-12-01 18:00 → 2018-12-03 18:00 (+2d) | 20d → 21d |
| 40 | **Release 04** | 2018-12-01 18:00 → 2018-12-03 18:00 (+2d) | 4d → 5d |
